# Projectplan

Schedule from MS Project, 2016-11-08 to 2017-11-01, A marks actual dates.
NTB

## Calendars

- Standard: Mon-Fri 08:00-12:00, 13:00-17:00; Sat-Sun off. Exceptions (off unless hours are given): 2016-12-26 to 2017-01-08 (Weihnachtsferien), 2017-07-17 to 2017-08-13 (Sommerferien).

## Resources

| Resource |
| --- |
| NIEE |
| LANS |
| GUTC |
| VISC |
| KALA |
| GRAU |
| GEHM |
| MARIO |
| DITF |

## Schedule

| ID | WBS | Task | Type | Duration | Start | Finish | Predecessors | Complete | Remaining | Total slack | Free slack | Constraint | Resources | Work | Actual work |
| --- | --- | --- | --- | --- | --- | --- | --- | --- | --- | --- | --- | --- | --- | --- | --- |
| 1 | 1 | **Milestone** |  | 226d | 2016-11-08 | 2017-11-01 |  |  |  | 0d |  |  |  |  |  |
| 2 | 1.1 | Project start | milestone, manual | 0d | 2016-11-08 | 2016-11-08 |  |  |  |  |  |  |  |  |  |
| 3 | 1.2 | MS1: Prototype | milestone, manual | 0d | 2017-07-03 | 2017-07-03 |  |  |  |  |  |  |  |  |  |
| 4 | 1.3 | MS2: Advanced System | milestone, manual | 0d | 2017-11-01 | 2017-11-01 |  |  |  |  |  |  |  |  |  |
| 5 | 2 | **1 Requirements engineering / Concept** |  | 34d | 2016-11-08 A | 2016-12-23 |  | 59% | 13.92d | 192d |  |  | LANS | 472h | 360.61h |
| 6 | 2.1 | Requirements engineering |  | 34d | 2016-11-08 A | 2016-12-23 |  | 50% | 17d | 0d |  | must start on 2016-11-08 |  |  |  |
| 7 | 2.2 | Chair digitizing |  | 25d | 2016-11-21 A | 2016-12-23 A |  | 50% |  |  |  | must start on 2016-11-21 | LANS | 200h | 200h |
| 8 | 2.3 | Concept development |  | 16d | 2016-11-21 A | 2016-12-12 |  | 75% | 4d | 0d |  | must start on 2016-11-21 |  |  |  |
| 9 | 2.4 | Sensor concept global and local |  | 16d | 2016-11-21 A | 2016-12-12 |  | 50% | 8d | 201d |  | start no earlier than 2016-11-21 |  |  |  |
| 10 | 2.5 | Recharging management |  | 5d | 2016-12-13 | 2016-12-19 | 8 |  |  | 0d |  | start no later than 2016-12-13 |  |  |  |
| 11 | 2.6 | Sensor concept, sensor fusion, data flow |  | 5d | 2016-12-13 | 2016-12-19 | 8 |  |  | 0d |  | must start on 2016-12-13 |  |  |  |
| 12 | 2.7 | Power Management, Battery, Current distribution |  | 4d | 2016-12-20 | 2016-12-23 | 11 |  |  | 0d |  | must finish on 2016-12-23 |  |  |  |
| 13 | 2.8 | M 1: Concept Review | milestone | 0d | 2016-12-23 | 2016-12-23 | 12 |  |  | 192d |  |  |  |  |  |
| 14 | 3 | **2 Active caster module** |  | 81d | 2016-11-08 A | 2017-03-14 |  | 22% | 63.52d | 145d |  |  | GUTC | 2048h | 113.29h |
| 15 | 3.1 | Drive concept, local power electronics |  | 15d | 2016-11-08 A | 2016-11-28 |  | 75% | 3.75d | 0d |  | must start on 2016-11-08 | LANS; NIEE | 240h |  |
| 16 | 3.2 | Sensor concept |  | 10d | 2016-11-29 A | 2016-12-12 | 15 | 50% | 5d | 2.6d | 0d |  | LANS; NIEE | 160h |  |
| 17 | 3.3 | Construction and development |  | 13d | 2016-12-13 A | 2017-01-12 | 16 | 20% | 10.4d | 4d | 0d |  | NIEE; GUTC | 208h |  |
| 18 | 3.4 | Order, Production and montage |  | 20d | 2017-01-13 | 2017-02-09 | 17 |  |  | 157d | 3d |  | GUTC | 160h |  |
| 19 | 3.5 | Order of power electronics |  | 1d | 2016-11-25 A | 2016-11-25 A |  | 100% |  |  |  | must start on 2016-11-25 | MARIO | 8h | 8h |
| 20 | 3.6 | The Motors is supplied |  | 1d | 2016-12-22 | 2016-12-22 | 19 |  |  | 0d |  | must start on 2016-12-22 |  |  |  |
| 21 | 3.7 | Integration, motor tests (with other drives) |  | 10d | 2016-12-23 | 2017-01-19 | 20 |  |  | 183d |  |  | LANS; VISC; GEHM | 240h |  |
| 22 | 3.8 | The power electronic is supplied |  | 1d | 2017-01-23 | 2017-01-23 | 19FS+30d |  |  | 154d | 0d |  |  |  |  |
| 23 | 3.9 | Construction and Software development for simple test of all electronic components (2x drives, 3x Encoder, 2x motors, 1x slip ring) |  | 4d | 2017-01-24 | 2017-01-27 | 22 |  |  | 166d | 0d |  |  |  |  |
| 24 | 3.10 | Encoder target is supplied |  | 1d | 2017-02-20 | 2017-02-20 |  |  |  | 0d |  | must start on 2017-02-20 |  |  |  |
| 25 | 3.11 | M 2.1: Test of all electronic components of the wheel module | milestone | 0d | 2017-01-27 | 2017-01-27 | 23 |  |  | 166d | 32d | start no earlier than 2017-01-27 |  |  |  |
| 26 | 3.12 | Installation and commissioning the right drives and Construction |  | 16d | 2017-02-21 | 2017-03-14 | 22, 24 |  |  | 134d | 0d |  | LANS; VISC; GEHM | 384h |  |
| 27 | 3.13 | M 2.2: Wheel steer module ready | milestone | 0d | 2017-03-14 | 2017-03-14 | 26, 18 |  |  | 134d | 0d |  |  |  |  |

| ID | WBS | Task | Type | Duration | Start | Finish | Predecessors | Complete | Remaining | Total slack | Free slack | Constraint | Resources | Work | Actual work |
| --- | --- | --- | --- | --- | --- | --- | --- | --- | --- | --- | --- | --- | --- | --- | --- |
| 28 | 4 | **3 Algorithms and controllers** |  | 25d | 2016-11-21 A | 2016-12-23 |  | 61% | 9.75d | 192d |  |  | LANS | 200h | 122h |
| 29 | 4.1 | Transformation algorithms |  | 10d | 2016-11-21 A | 2016-12-02 |  | 75% | 2.5d | 6.75d | 0d | start no earlier than 2016-11-21 |  |  |  |
| 30 | 4.2 | Exploration / development of a generic dynamic model |  | 9d | 2016-12-05 A | 2016-12-15 | 29 | 75% | 2.25d | 1d | 0d |  |  |  |  |
| 31 | 4.3 | Algorithms for cartesian controllers |  | 4d | 2016-12-16 | 2016-12-21 | 30 |  |  | 1d | 0d |  |  |  |  |
| 32 | 4.4 | Verification / Experiments |  | 2d | 2016-12-22 A | 2016-12-23 | 31 | 50% | 1d | 192d | 0d |  |  |  |  |
| 33 | 4.5 | M 3: Algorithms and controllers ready | milestone | 0d | 2016-12-23 | 2016-12-23 | 32 |  |  | 192d |  |  |  |  |  |
| 34 | 5 | **4 First test only with baseframe** |  | 54d | 2017-01-13 | 2017-03-29 |  |  |  | 4d |  |  | GRAU | 1064h |  |
| 35 | 5.1 | Construction and development the Baseframe |  | 15d | 2017-01-13 | 2017-02-02 | 17 |  |  | 4d | 0d | start no earlier than 2017-01-09 | GUTC; NIEE | 240h |  |
| 36 | 5.2 | Order and Production |  | 20d | 2017-02-03 | 2017-03-02 | 35 |  |  | 142d | 8d |  | GUTC | 160h |  |
| 37 | 5.3 | Mounting the drives |  | 5d | 2017-03-15 | 2017-03-21 | 36, 27, 25 |  |  | 134d | 0d |  | GUTC | 40h |  |
| 38 | 5.4 | Commissioning and testing (not with the right electronics) |  | 6d | 2017-03-22 | 2017-03-29 | 37 |  |  | 134d | 0d |  | KALA; LANS; VISC; GEHM | 192h |  |
| 39 | 5.5 | M 4: Baseframe ready | milestone | 0d | 2017-03-29 | 2017-03-29 | 38 |  |  | 134d |  |  |  |  |  |
| 40 | 6 | **5 Robot software development** |  | 103d | 2017-01-09 | 2017-05-31 |  |  |  | 49d |  |  | VISC; LANS | 1648h |  |
| 41 | 6.1 | Control-System for the drives |  | 20d | 2017-01-09 | 2017-02-03 |  |  |  | 49d | 0d | start no earlier than 2017-01-09 |  |  |  |
| 42 | 6.2 | Sensors commissioning |  | 6d | 2017-02-06 | 2017-02-13 | 41 |  |  | 49d | 0d |  |  |  |  |
| 43 | 6.3 | People detection |  | 20d | 2017-02-14 | 2017-03-13 | 42 |  |  | 49d | 0d |  |  |  |  |
| 44 | 6.4 | Navigation, position detection, obstacle detection, |  | 20d | 2017-03-14 | 2017-04-10 | 43 |  |  | 49d | 0d |  |  |  |  |
| 45 | 6.5 | Control-System with sensors |  | 15d | 2017-04-11 | 2017-05-01 | 44 |  |  | 49d | 0d |  |  |  |  |
| 46 | 6.6 | Safety-System |  | 7d | 2017-05-02 | 2017-05-10 | 45 |  |  | 49d | 0d |  |  |  |  |
| 47 | 6.7 | Sequencer |  | 15d | 2017-05-11 | 2017-05-31 | 46 |  |  | 49d | 0d |  |  |  |  |
| 48 | 6.8 | M 5: Robot software ready | milestone | 0d | 2017-05-31 | 2017-05-31 | 47 |  |  | 49d | 0d |  |  |  |  |
| 49 | 7 | **6 Constructive postprocessing of the Chair** |  | 91d | 2017-02-03 | 2017-06-09 |  |  |  | 4d |  |  | LANS | 2224h |  |
| 50 | 7.1 | Construction and manufacture of the prototype (rotate the seat…) |  | 26d | 2017-02-03 | 2017-03-10 | 35 |  |  | 4d | 0d |  | GUTC; NIEE | 416h |  |
| 51 | 7.2 | Order and Production |  | 35d | 2017-02-27 | 2017-04-14 | 50FS-10d |  |  | 4d | 0d |  | GUTC | 280h |  |
| 52 | 7.3 | Assembly and integration Automation module |  | 20d | 2017-04-17 | 2017-05-12 | 51 |  |  | 4d | 0d |  | GUTC | 160h |  |
| 53 | 7.4 | Commissioning and testing |  | 20d | 2017-05-15 | 2017-06-09 | 52 |  |  | 4d | 0d |  | KALA; LANS; VISC; GEHM | 640h |  |
| 54 | 7.5 | M 6: Prototype ready | milestone | 0d | 2017-06-09 | 2017-06-09 | 53 |  |  | 4d | 0d |  |  |  |  |

| ID | WBS | Task | Type | Duration | Start | Finish | Predecessors | Complete | Remaining | Total slack | Free slack | Constraint | Resources | Work | Actual work |
| --- | --- | --- | --- | --- | --- | --- | --- | --- | --- | --- | --- | --- | --- | --- | --- |
| 55 | 8 | **7 Small series production mechanic** |  | 68d | 2017-06-12 | 2017-10-11 |  |  |  | 4d |  |  |  | 816h |  |
| 56 | 8.1 | Order and produce of all mechanical parts |  | 35d | 2017-06-12 | 2017-08-25 | 54 |  |  | 4d | 0d |  | GUTC | 280h |  |
| 57 | 8.2 | Montage |  | 35d | 2017-08-14 | 2017-09-29 | 56FS-10d |  |  | 4d | 0d |  | GUTC | 280h |  |
| 58 | 8.3 | Commissioning and testing |  | 8d | 2017-10-02 | 2017-10-11 | 57 |  |  | 4d | 0d |  | KALA; LANS; VISC; GEHM | 256h |  |
| 59 | 8.4 | M 7: Mechanic for the "Moving Chairs" ready | milestone | 0d | 2017-10-11 | 2017-10-11 | 58 |  |  | 4d | 0d |  |  |  |  |
| 60 | 9 | **8 Control hardware** |  | 144d | 2016-11-08 A | 2017-06-09 |  | 12% | 126.62d | 82d |  |  | GRAU | 1424h | 139.06h |
| 61 | 9.1 | EtherCAT |  | 34d | 2016-11-08 A | 2016-12-23 |  | 60% | 13.6d | 37d | 0d |  | GEHM | 272h |  |
| 62 | 9.2 | Main control: Evaluation, Procurement, Testing |  | 5d | 2017-01-09 | 2017-01-13 | 61 |  |  | 37d | 0d |  |  |  |  |
| 63 | 9.3 | Servo Drives: Evaluation, Procurement, Testing |  | 5d | 2017-01-09 | 2017-01-13 | 61 |  |  | 37d | 0d |  |  |  |  |
| 64 | 9.4 | Sensor concept global and local |  | 20d | 2017-01-16 | 2017-02-10 | 63, 62 |  |  | 37d | 0d |  |  |  |  |
| 65 | 9.5 | Security electronics: Evaluation, Procurement, Testing |  | 20d | 2017-02-06 | 2017-03-03 | 64FS-5d |  |  | 37d | 0d |  |  |  |  |
| 66 | 9.6 | PCBs and communication module development |  | 30d | 2017-02-27 | 2017-04-07 | 65FS-5d |  |  | 37d | 0d |  |  |  |  |
| 67 | 9.7 | Order and Production for Prototype |  | 35d | 2017-04-03 | 2017-05-19 | 66FS-5d |  |  | 37d | 0d |  |  |  |  |
| 68 | 9.8 | Hardware tests |  | 20d | 2017-05-15 | 2017-06-09 | 67FS-5d |  |  | 37d | 0d |  |  |  |  |
| 69 | 9.9 | M 8: Hardware control system tested | milestone | 0d | 2017-06-09 | 2017-06-09 | 68 |  |  | 82d |  |  |  |  |  |
| 70 | 10 | **9 Basic software development** |  | 140d | 2016-11-08 A | 2017-06-05 |  | 15% | 119.64d | 86d |  |  | GRAU | 1840h | 162.91h |
| 71 | 10.1 | Robotics Library development, control system & safety system |  | 50d | 2016-11-08 A | 2017-01-30 |  | 40% | 30d | 161d | 0d |  | GRAU | 400h |  |
| 72 | 10.2 | Robotics Library development, sequencer |  | 15d | 2017-01-31 | 2017-02-20 | 71 |  |  | 161d |  |  |  |  |  |
| 73 | 10.3 | Robotics Library development, hardware abstraction layer |  | 50d | 2017-01-09 | 2017-03-17 |  |  |  | 142d |  | start no earlier than 2017-01-09 |  |  |  |
| 74 | 10.4 | Operating system support (Kernel, QNX, …) |  | 40d | 2016-11-08 A | 2017-01-16 |  | 50% | 20d | 86d | 0d |  | KALA | 320h |  |
| 75 | 10.5 | ROS interfaceing |  | 60d | 2017-01-17 | 2017-04-10 | 74 |  |  | 86d | 0d |  |  |  |  |
| 76 | 10.6 | Global Data Flow |  | 20d | 2017-04-11 | 2017-05-08 | 75 |  |  | 106d |  |  |  |  |  |
| 77 | 10.7 | Test Cases |  | 40d | 2017-04-11 | 2017-06-05 | 75 |  |  | 86d | 0d |  |  |  |  |
| 78 | 10.8 | M 9: Basic software ready | milestone | 0d | 2017-06-05 | 2017-06-05 | 77 |  |  | 86d |  |  |  |  |  |

| ID | WBS | Task | Type | Duration | Start | Finish | Predecessors | Complete | Remaining | Total slack | Free slack | Constraint | Resources | Work | Actual work |
| --- | --- | --- | --- | --- | --- | --- | --- | --- | --- | --- | --- | --- | --- | --- | --- |
| 79 | 11 | **10 Small series production electronic** |  | 65d | 2017-05-15 | 2017-09-08 |  |  |  | 37d |  |  | GRAU | 520h |  |
| 80 | 11.1 | Extensive testing |  | 25d | 2017-05-15 | 2017-06-16 | 68SS |  |  | 37d | 0d |  |  |  |  |
| 81 | 11.2 | Rework of the PCBs |  | 10d | 2017-06-19 | 2017-06-30 | 80 |  |  | 37d | 0d |  |  |  |  |
| 82 | 11.3 | Order and produce of all electronic parts |  | 25d | 2017-07-03 | 2017-09-01 | 81 |  |  | 37d | 0d |  |  |  |  |
| 83 | 11.4 | Hardware tests |  | 5d | 2017-09-04 | 2017-09-08 | 82 |  |  | 37d | 0d |  |  |  |  |
| 84 | 11.5 | M 10: Electronic for the "Moving Chairs" ready | milestone | 0d | 2017-09-08 | 2017-09-08 | 83 |  |  | 37d |  |  |  |  |  |
| 85 | 12 | **11 Art performance development** |  | 83d | 2017-04-03 A | 2017-08-23 |  | 3% | 80.23d | 49d |  |  | NIEE | 1304h | 22.13h |
| 86 | 12.1 | Concept development |  | 20d | 2017-04-03 A | 2017-04-28 |  | 10% | 18d | 112d |  | start no earlier than 2017-04-01 |  |  |  |
| 87 | 12.2 | Algorithms for demonstration |  | 25d | 2017-06-01 | 2017-07-05 | 48 |  |  | 49d | 0d |  | LANS; VISC | 400h |  |
| 88 | 12.3 | Simulation of the performance |  | 15d | 2017-07-06 | 2017-08-23 | 87 |  |  | 49d | 0d |  | LANS; VISC | 240h |  |
| 89 | 12.4 | M 11: Simulation for the demonstration is ready | milestone | 0d | 2017-08-23 | 2017-08-23 | 88 |  |  | 49d |  |  |  |  |  |
| 90 | 13 | **12 Usability test, optimization** |  | 10d | 2017-10-12 | 2017-10-25 |  |  |  | 4d |  |  |  |  |  |
| 91 | 13.1 | Usability test, optimization, demonstration, exception tests |  | 10d | 2017-10-12 | 2017-10-25 | 59 |  |  | 4d | 0d |  |  |  |  |
| 92 | 13.2 | M 12: Demonstration with "Moving Chairs" ready | milestone | 0d | 2017-10-25 | 2017-10-25 | 91 |  |  | 4d |  |  |  |  |  |
| 93 | 14 | **13 Project Management** |  | 226d | 2016-11-08 A | 2017-10-31 |  | 10% | 203.4d | 0d |  |  |  | 1808h |  |
| 94 | 14.1 | Reporting, controlling and documetation |  | 226d | 2016-11-08 A | 2017-10-31 | 2SS | 10% | 203.4d | 0d |  | start no earlier than 2016-11-08 | LANS | 1808h |  |
